# 11

Schedule from MS Project, 2010-12-22 to 2011-01-14, A marks actual dates.

## Calendars

- 标准: Mon-Fri 08:00-12:00, 13:00-17:00; Sat-Sun off. Exceptions (off unless hours are given): 2011-01-08 08:00-12:00, 13:00-17:00.

## Resources

| Resource |
| --- |
| 胡欣 |
| 况浩 |
| 袁云龙 |
| 张长风 |

## Schedule

| ID | WBS | Task | Duration | Start | Finish | Predecessors | Complete | Remaining | Total slack | Constraint | Resources | Work | Actual work |
| --- | --- | --- | --- | --- | --- | --- | --- | --- | --- | --- | --- | --- | --- |
| 1 | 1 | **EMS 系统Web 端** | 19d? | 2010-12-22 A | 2011-01-14 |  | 74% | 4.93d? | 0d |  |  | 464h | 352h |
| 2 | 1.1 | **用户管理** | 11d? | 2010-12-22 A | 2011-01-05 |  | 83% | 1.89d? | 8d |  |  | 280h | 232h |
| 3 | 1.1.1 | 用户部门新增 | 3d? | 2010-12-22 | 2010-12-24 |  |  |  | 16d | start no earlier than 2010-12-22 | 况浩 | 24h |  |
| 4 | 1.1.2 | 用户新增 | 4d? | 2010-12-22 A | 2010-12-27 A |  | 100% |  |  | start no earlier than 2010-12-22 | 胡欣 | 32h | 32h |
| 5 | 1.1.3 | 用户删除/失效 | 3d | 2010-12-22 | 2010-12-24 |  |  |  | 16d | start no earlier than 2010-12-22 | 袁云龙 | 24h |  |
| 6 | 1.1.4 | 用户信息维护 | 4d | 2010-12-28 A | 2010-12-31 A | 4 | 100% |  |  |  | 胡欣 | 32h | 32h |
| 7 | 1.1.5 | 用户角色添加/删除 | 3d | 2010-12-27 A | 2010-12-29 A | 3 | 100% |  |  |  | 况浩 | 24h | 24h |
| 8 | 1.1.6 | 角色创建,角色删除/失效 | 5d | 2010-12-27 A | 2010-12-31 A | 5 | 100% |  |  |  | 袁云龙 | 40h | 40h |
| 9 | 1.1.7 | 角色信息维护 | 3d | 2011-01-03 A | 2011-01-05 A | 6 | 100% |  |  |  | 胡欣 | 24h | 24h |
| 10 | 1.1.8 | 部门信息维护 | 3d? | 2011-01-03 A | 2011-01-05 A | 8 | 100% |  |  |  | 况浩 | 24h | 24h |
| 11 | 1.1.9 | 角色实体添加/删除 | 3d | 2010-12-22 A | 2010-12-24 A |  | 100% |  |  |  | 张长风 | 24h | 24h |
| 12 | 1.1.10 | 角色设备添加/删除/失效 | 4d | 2010-12-27 A | 2010-12-30 A | 11 | 100% |  |  |  | 张长风 | 32h | 32h |
| 13 | 1.2 | **页面管理** | 8d | 2011-01-06 A | 2011-01-14 |  | 58% | 3.37d | 0d |  |  | 184h | 120h |
| 14 | 1.2.1 | 子系统维护 | 3d | 2011-01-06 A | 2011-01-08 A |  | 100% |  |  | start no earlier than 2011-01-06 | 袁云龙 | 24h | 24h |
| 15 | 1.2.2 | 普通配置模板页面新增 | 4d | 2011-01-06 A | 2011-01-10 A |  | 100% |  |  | start no earlier than 2011-01-06 | 胡欣 | 32h | 32h |
| 16 | 1.2.3 | 普通配置模板页面维护 | 4d | 2011-01-08 | 2011-01-12 |  |  |  | 2d | start no earlier than 2011-01-08 | 况浩 | 32h |  |
| 17 | 1.2.4 | 普通配置页面模板组件 | 4d | 2011-01-11 A | 2011-01-14 A | 15 | 100% |  |  | start no earlier than 2011-01-05 | 袁云龙; 胡欣 | 64h | 64h |
| 18 | 1.2.5 | 临时配置页面数据引擎配置 | 4d | 2011-01-06 | 2011-01-10 |  |  |  | 4d | start no earlier than 2011-01-06 | 张长风 | 32h |  |
